Schedule from MS Project, 2010-08-17 to 2010-10-15.

## Calendars

- 标准: Mon-Fri 08:00-12:00, 13:00-17:00; Sat-Sun off.

## Resources

| Resource |
| --- |
| 设计者 |
| 测试者 |

## Schedule

| ID | WBS | Task | Duration | Start | Finish | Predecessors | Total slack | Resources | Work |
| --- | --- | --- | --- | --- | --- | --- | --- | --- | --- |
| 1 | 1 | **第一阶段** | 3d | 2010-08-17 | 2010-08-19 |  | 0d |  | 24h |
| 2 | 1.1 | 需求整理和分析 | 2d | 2010-08-17 | 2010-08-18 |  | 0d | 设计者 | 16h |
| 3 | 1.2 | 需求确认 | 1d | 2010-08-19 | 2010-08-19 | 2 | 0d | 设计者 | 8h |
| 4 | 2 | **第二阶段** | 11d? | 2010-08-20 | 2010-09-03 |  | 0d |  | 72h |
| 5 | 2.1 | 集群设计技术预研 | 2d | 2010-08-20 | 2010-08-23 | 3 | 0d | 设计者 | 16h |
| 6 | 2.2 | 模块启动与部署设计预研 | 1d | 2010-08-24 | 2010-08-24 | 5 | 0d | 设计者 | 8h |
| 7 | 2.3 | **概要设计整理** | 5d? | 2010-08-25 | 2010-08-31 |  | 0d |  | 24h |
| 8 | 2.3.1 | 总体设计 | 2d | 2010-08-25 | 2010-08-26 | 6 | 0d |  |  |
| 9 | 2.3.2 | 功能设计 | 2d | 2010-08-27 | 2010-08-30 | 8 | 0d | 设计者 | 16h |
| 10 | 2.3.3 | 接口设计 | 1d? | 2010-08-31 | 2010-08-31 | 9 | 0d | 设计者 | 8h |
| 11 | 2.4 | 概要设计文档编写 | 2d | 2010-09-01 | 2010-09-02 | 7 | 0d | 设计者 | 16h |
| 12 | 2.5 | 概要设计确认 | 1d | 2010-09-03 | 2010-09-03 | 11 | 0d | 设计者 | 8h |
| 13 | 3 | **第三阶段** | 29d? | 2010-09-06 | 2010-10-14 |  | 0d |  | 272h |
| 14 | 3.1 | **编码** | 24d? | 2010-09-06 | 2010-10-07 |  | 0d |  | 168h |
| 15 | 3.1.1 | 内存数据库引擎适配器实现 | 3d | 2010-09-06 | 2010-09-08 | 12 | 0d | 设计者 | 24h |
| 16 | 3.1.2 | 内存数据库统一交互API封装 | 5d | 2010-09-09 | 2010-09-15 | 15 | 0d | 设计者 | 40h |
| 17 | 3.1.3 | 外部数据源交互接口实现 | 2d | 2010-09-16 | 2010-09-17 | 16 | 0d | 设计者 | 16h |
| 18 | 3.1.4 | 模块启动和部署设计实现 | 2d | 2010-09-20 | 2010-09-21 | 17 | 0d | 设计者 | 16h |
| 19 | 3.1.5 | 业务相关接口设计 | 3d? | 2010-09-22 | 2010-09-24 | 18 | 0d | 设计者 | 24h |
| 20 | 3.1.6 | 集群设计实现 | 6d | 2010-09-27 | 2010-10-04 | 19 | 0d | 设计者 | 48h |
| 21 | 3.1.7 | 其他 | 3d? | 2010-10-05 | 2010-10-07 | 20 | 0d |  |  |
| 22 | 3.2 | **测试** | 5d | 2010-10-08 | 2010-10-14 | 14 | 0d |  | 40h |
| 23 | 3.2.1 | 功能测试 | 3d | 2010-10-08 | 2010-10-12 | 14 | 0d | 测试者 | 24h |
| 24 | 3.2.2 | 性能测试 | 2d | 2010-10-13 | 2010-10-14 | 23 | 0d | 测试者 | 16h |

Notes:
- 19: 业务相关接口设计和业务关联较紧密，需要经过讨论后才能确定

| ID | WBS | Task | Duration | Start | Finish | Predecessors | Total slack | Resources | Work |
| --- | --- | --- | --- | --- | --- | --- | --- | --- | --- |
| 25 | 3.3 | **文档编写** | 4d | 2010-10-11 | 2010-10-14 | 14FS+1d | 0d | 设计者 | 64h |
| 26 | 3.3.1 | 部署文档编写 | 1d | 2010-10-11 | 2010-10-11 |  | 0d | 设计者 | 8h |
| 27 | 3.3.2 | 开发文档编写 | 3d | 2010-10-12 | 2010-10-14 | 26 | 0d | 设计者 | 24h |
| 28 | 4 | **第四阶段** | 1d | 2010-10-15 | 2010-10-15 |  | 0d |  |  |
| 29 | 4.1 | 验收 | 1d | 2010-10-15 | 2010-10-15 | 13 | 0d |  |  |

Notes:
- 25: 延隔1天是为测试部署环境及其它支持
