# 项目计划

Schedule from MS Project, 2008-07-28 to 2009-02-23.
文件编号：NCI/SP-PM01-T04

## Calendars

- 标准: Mon-Fri 08:00-12:00, 13:00-17:00; Sat-Sun off. Exceptions (off unless hours are given): 2008-09-27 to 2008-09-28 08:00-12:00, 13:00-17:00, 2009-01-04 08:00-12:00, 13:00-17:00.

## Resources

| Resource |
| --- |
| 分析人员 |
| 项目经理 |
| 软件工程师 |
| 管理人员 |
| PPQA工程师 |
| 测试人员 |
| 培训人员 |
| 技术联络人员 |
| 部署小组 |
| 俞翔 |
| 汪棋良 |
| 周惠明 |
| 吴冰 |
| WEB开发待定人员1 |
| 王莹 |
| 王慧 |
| 张志勇 |
| 孙志毅 |
| 周慧明 |

## Schedule

| ID | WBS | Task | Duration | Start | Finish | Predecessors | Total slack | Free slack | Constraint | Resources | Work |
| --- | --- | --- | --- | --- | --- | --- | --- | --- | --- | --- | --- |
| 1 | 1 | **项目启动** | 1d? | 2008-09-22 | 2008-09-22 |  | 113d |  |  |  | 24h |
| 2 | 1.1 | 项目启动内部会议 | 1d? | 2008-09-22 | 2008-09-22 |  | 106d |  | start no earlier than 2008-09-22 | 俞翔; 汪棋良; 周慧明 | 24h |
| 3 | 2 | **需求分析** | 22d? | 2008-09-22 | 2008-10-17 |  | 92d |  |  |  | 432h |
| 4 | 2.1 | **需求获取** | 5d? | 2008-09-22 | 2008-09-26 |  | 109d |  |  |  | 120h |
| 5 | 2.1.1 | 调研准备 | 3d? | 2008-09-22 | 2008-09-24 |  | 102d | 0d | start no earlier than 2008-09-22 | 俞翔; 汪棋良; 周慧明 | 72h |
| 6 | 2.1.2 | 需求调研 | 2d | 2008-09-25 | 2008-09-26 | 5 | 102d |  | finish no earlier than 2008-09-25 | 俞翔; 汪棋良; 周慧明 | 48h |
| 7 | 2.2 | **需求分析** | 13d? | 2008-09-27 | 2008-10-13 |  | 96d |  |  |  | 264h |
| 8 | 2.2.1 | 需求分析 | 10d | 2008-09-27 | 2008-10-08 |  | 91d | 2d | finish no earlier than 2008-10-08 | 俞翔; 汪棋良; 周慧明 | 240h |
| 9 | 2.2.2 | 需求分析说明书编写 | 1d? | 2008-10-13 | 2008-10-13 | 8 | 96d |  | finish no earlier than 2008-10-13 | 俞翔; 汪棋良; 周慧明 | 24h |
| 10 | 2.3 | **需求评审** | 4d? | 2008-10-14 | 2008-10-17 |  | 92d |  |  |  | 48h |
| 11 | 2.3.1 | 需求评审 | 1d? | 2008-10-14 | 2008-10-14 |  | 87d | 2d | start no earlier than 2008-10-14 | 俞翔; 汪棋良; 周慧明 | 24h |
| 12 | 2.3.2 | 评审问题修正 | 1d? | 2008-10-17 | 2008-10-17 | 11 | 92d |  | finish no earlier than 2008-10-17 | 俞翔; 汪棋良; 周慧明 | 24h |
| 13 | 3 | **项目策划** | 4d? | 2008-10-14 | 2008-10-17 |  | 92d |  |  |  | 144.08h |
| 14 | 3.1 | WBS分解 | 1d? | 2008-10-14 | 2008-10-14 |  | 86d | 1d | start no earlier than 2008-10-14 | 俞翔 | 8h |
| 15 | 3.2 | 项目估算 | 1d? | 2008-10-16 | 2008-10-16 | 14 | 93d |  | finish no earlier than 2008-10-16 | 俞翔; 汪棋良; 周慧明 | 24h |
| 16 | 3.3 | 项目进度计划编写 | 1d? | 2008-10-16 | 2008-10-16 |  | 86d |  | start no earlier than 2008-10-16 | 俞翔; 汪棋良; 周慧明 | 24h |
| 17 | 3.4 | 风险识别 | 1d? | 2008-10-16 | 2008-10-16 |  | 86d |  | start no earlier than 2008-10-16 | 俞翔; 汪棋良; 周慧明; 张志勇 | 32h |
| 18 | 3.5 | 项目计划书编写 | 1d? | 2008-10-16 | 2008-10-16 |  | 85d | 0d | start no earlier than 2008-10-16 | 俞翔 | 8h |
| 19 | 3.6 | 内部启动会和计划讨论 | 1d? | 2008-10-17 | 2008-10-17 | 18 | 85d |  |  | 俞翔; 汪棋良; 周慧明 | 24h |
| 20 | 3.7 | 项目计划书评审 | 0.43d? | 2008-10-17 | 2008-10-17 |  | 85.57d |  | start no earlier than 2008-10-17 | 俞翔; 汪棋良; 周惠明; 王莹; 王慧; 张志勇; 孙志毅 | 24.08h |
| 21 | 4 | **概要设计** | 26d? | 2008-10-20 | 2008-11-24 |  | 66d |  |  |  | 480h |
| 22 | 4.1 | **系统设计** | 10d | 2008-10-20 | 2008-10-31 |  | 82d |  |  |  | 208h |
| 23 | 4.1.1 | 总体设计 | 2d | 2008-10-20 | 2008-10-21 |  | 76.33d | 0d | finish no earlier than 2008-10-21 | 俞翔; 汪棋良; 周惠明 | 48h |
| 24 | 4.1.2 | 功能设计 | 5d | 2008-10-22 | 2008-10-28 | 23 | 76.33d | 1.33d | finish no earlier than 2008-10-28 | 俞翔; 汪棋良; 周惠明 | 120h |
| 25 | 4.1.3 | 数据库设计 | 0.67d | 2008-10-30 | 2008-10-30 | 24 | 82d | 0d | finish no earlier than 2008-10-30 | 俞翔; 汪棋良; 周惠明 | 16h |
| 26 | 4.1.4 | 接口设计 | 1d | 2008-10-31 | 2008-10-31 | 25 | 75d |  | finish no earlier than 2008-10-31 | 俞翔; 汪棋良; 周惠明 | 24h |

| ID | WBS | Task | Duration | Start | Finish | Predecessors | Total slack | Free slack | Constraint | Resources | Work |
| --- | --- | --- | --- | --- | --- | --- | --- | --- | --- | --- | --- |
| 27 | 4.2 | **设计评审** | 16d? | 2008-11-03 | 2008-11-24 |  | 66d |  |  |  | 272h |
| 28 | 4.2.1 | 设计复查 | 2d? | 2008-11-03 | 2008-11-04 |  | 63d | 0d | finish no earlier than 2008-11-04 | 俞翔; 汪棋良; 周惠明 | 48h |
| 29 | 4.2.2 | WEB管理决策分析 | 1d? | 2008-11-05 | 2008-11-05 | 28 | 63d | 0d |  | 俞翔 | 8h |
| 30 | 4.2.3 | 概要设计说明书编写 | 6d | 2008-11-06 | 2008-11-13 | 29 | 63d | 4d | finish no earlier than 2008-11-12 | 俞翔; 汪棋良; 周惠明 | 144h |
| 31 | 4.2.4 | 设计评审 | 1d | 2008-11-20 | 2008-11-20 | 30 | 59d | 0d | start no earlier than 2008-11-20 | 俞翔; 汪棋良; 周惠明 | 24h |
| 32 | 4.2.5 | 评审问题修正 | 2d | 2008-11-21 | 2008-11-24 | 31 | 59d |  | finish no earlier than 2008-11-21 | 俞翔; 汪棋良; 周惠明 | 48h |
| 33 | 5 | **编码实现** | 42d? | 2008-11-17 | 2009-01-12 |  | 30d |  |  |  | 1216h |
| 34 | 5.1 | **开发前准备工作** | 3d? | 2008-11-17 | 2008-11-19 |  | 69d |  |  |  | 72h |
| 35 | 5.1.1 | 开发环境部署 | 2d? | 2008-11-17 | 2008-11-18 |  | 62d | 0d | finish no earlier than 2008-11-18 | 俞翔; 汪棋良; 周惠明 | 48h |
| 36 | 5.1.2 | 数据库构建 | 2d? | 2008-11-18 | 2008-11-19 |  | 62d |  | start no earlier than 2008-11-18 | 周惠明 | 16h |
| 37 | 5.1.3 | 准备工作确认 | 1d? | 2008-11-19 | 2008-11-19 | 35 | 62d |  |  | 俞翔 | 8h |
| 38 | 5.2 | **编写代码和单位测试** | 41d? | 2008-11-18 | 2009-01-12 |  | 30d |  |  |  | 1008h |
| 39 | 5.2.1 | 客户端组件框架开发 | 6d? | 2008-11-18 | 2008-11-25 |  | 49d | 0d | finish no earlier than 2008-11-25 | 汪棋良 | 48h |
| 40 | 5.2.2 | 服务器端组件框架开发 | 6d? | 2008-11-18 | 2008-11-25 |  | 54d | 0d | finish no earlier than 2008-11-25 | 周惠明 | 48h |
| 41 | 5.2.3 | **系统接口层－内部接口** | 18d | 2008-11-26 | 2008-12-19 |  | 47d |  |  | 周惠明 | 144h |
| 42 | 5.2.3.1 | 升级模块查询接口 | 1d | 2008-11-26 | 2008-11-26 | 40 | 54d | 0d | start no earlier than 2008-11-26 |  |  |
| 43 | 5.2.3.2 | 升级模块下载接口 | 1d | 2008-11-27 | 2008-11-27 | 42 | 54d | 0d |  |  |  |
| 44 | 5.2.3.3 | 业务模型图的类型查询接口 | 1d | 2008-11-28 | 2008-11-28 | 43 | 54d | 0d |  |  |  |
| 45 | 5.2.3.4 | 代码表信息查询接口 | 1d | 2008-12-01 | 2008-12-01 | 44 | 54d |  |  |  |  |
| 46 | 5.2.3.5 | 图元种类清单获取接口 | 1d | 2008-12-01 | 2008-12-01 |  | 54d |  | start no earlier than 2008-12-01 |  |  |
| 47 | 5.2.3.6 | 图元获取接口 | 1d | 2008-12-02 | 2008-12-02 |  | 53d |  | start no earlier than 2008-12-02 |  |  |
| 48 | 5.2.3.7 | 图元删除接口 | 1d | 2008-12-02 | 2008-12-02 |  | 53d |  | start no earlier than 2008-12-02 |  |  |
| 49 | 5.2.3.8 | 图元保存接口 | 1d | 2008-12-02 | 2008-12-02 |  | 53d |  | start no earlier than 2008-12-02 |  |  |
| 50 | 5.2.3.9 | 图形文件的基本属性获取接口 | 1d | 2008-12-03 | 2008-12-03 |  | 52d |  | start no earlier than 2008-12-03 |  |  |
| 51 | 5.2.3.10 | 获取图形文件列表接口 | 1d | 2008-12-03 | 2008-12-03 |  | 52d |  | start no earlier than 2008-12-03 |  |  |
| 52 | 5.2.3.11 | 获取图形文件接口 | 1d | 2008-12-03 | 2008-12-03 |  | 52d |  | start no earlier than 2008-12-03 |  |  |
| 53 | 5.2.3.12 | 存图接口 | 1d | 2008-12-03 | 2008-12-03 |  | 52d |  | start no earlier than 2008-12-03 |  |  |
| 54 | 5.2.3.13 | 图元与模型关系获取接口 | 1d | 2008-12-04 | 2008-12-04 |  | 51d |  | start no earlier than 2008-12-04 |  |  |
| 55 | 5.2.3.14 | 图元与模型关系维护接口 | 1d | 2008-12-04 | 2008-12-04 |  | 51d |  | start no earlier than 2008-12-04 |  |  |
| 56 | 5.2.3.15 | 业务模型列表获取接口 | 1d | 2008-12-04 | 2008-12-04 |  | 51d |  | start no earlier than 2008-12-04 |  |  |
| 57 | 5.2.3.16 | 业务模型属性列表获取接口 | 1d | 2008-12-05 | 2008-12-05 |  | 50d |  | start no earlier than 2008-12-05 |  |  |
| 58 | 5.2.3.17 | 业务模型动作列表获取 | 1d | 2008-12-05 | 2008-12-05 |  | 50d |  | start no earlier than 2008-12-05 |  |  |
| 59 | 5.2.3.18 | 业务模型状态列表获取 | 1d | 2008-12-05 | 2008-12-05 |  | 50d |  | start no earlier than 2008-12-05 |  |  |
| 60 | 5.2.3.19 | 模板内图元关系获取接口 | 1d | 2008-12-08 | 2008-12-08 |  | 49d |  | start no earlier than 2008-12-06 |  |  |
| 61 | 5.2.3.20 | 模板内图元关系维护接口 | 1d | 2008-12-08 | 2008-12-08 |  | 49d |  | start no earlier than 2008-12-08 |  |  |
| 62 | 5.2.3.21 | 模板模型与图元模型同业务模型查询接口 | 2d | 2008-12-09 | 2008-12-10 |  | 47d |  | start no earlier than 2008-12-09 |  |  |
| 63 | 5.2.3.22 | 模板模型与图元模型同业务模型关系维护接口 | 2d | 2008-12-10 | 2008-12-11 |  | 46d |  | start no earlier than 2008-12-10 |  |  |
| 64 | 5.2.3.23 | 图模板模型内图元模型属性关系查询接口 | 2d | 2008-12-11 | 2008-12-12 |  | 45d |  | start no earlier than 2008-12-11 |  |  |
| 65 | 5.2.3.24 | 图模板模型内图元模型属性关系维护接口 | 2d | 2008-12-12 | 2008-12-15 |  | 44d |  | start no earlier than 2008-12-12 |  |  |
| 66 | 5.2.3.25 | 图模板内图元与业务模型关系获取接口 | 2d | 2008-12-15 | 2008-12-16 |  | 43d |  | start no earlier than 2008-12-15 |  |  |
| 67 | 5.2.3.26 | 图模板内图元与业务模型关系维护 | 2d | 2008-12-16 | 2008-12-17 |  | 42d |  | start no earlier than 2008-12-16 |  |  |
| 68 | 5.2.3.27 | 业务对象数据请求接口 | 1d | 2008-12-18 | 2008-12-18 |  | 41d |  | start no earlier than 2008-12-18 |  |  |
| 69 | 5.2.3.28 | 业务对象创建接口 | 1d | 2008-12-18 | 2008-12-18 |  | 41d |  | start no earlier than 2008-12-18 |  |  |
| 70 | 5.2.3.29 | 业务对象关系查询接口 | 1d | 2008-12-19 | 2008-12-19 |  | 40d |  | start no earlier than 2008-12-19 |  |  |
| 71 | 5.2.3.30 | 业务对象关系维护接口 | 1d | 2008-12-19 | 2008-12-19 |  | 40d |  | start no earlier than 2008-12-19 |  |  |

| ID | WBS | Task | Duration | Start | Finish | Predecessors | Total slack | Free slack | Constraint | Resources | Work |
| --- | --- | --- | --- | --- | --- | --- | --- | --- | --- | --- | --- |
| 72 | 5.2.4 | **向外提供的接口** | 6d | 2008-12-22 | 2008-12-29 |  | 41d |  |  | 周惠明 | 48h |
| 73 | 5.2.4.1 | 打开本地指定文件 | 1d | 2008-12-22 | 2008-12-22 |  | 39d |  | start no earlier than 2008-12-22 |  |  |
| 74 | 5.2.4.2 | 保存文件到本地 | 1d | 2008-12-22 | 2008-12-22 |  | 39d |  | start no earlier than 2008-12-22 |  |  |
| 75 | 5.2.4.3 | 打开远程指定文件 | 1d | 2008-12-22 | 2008-12-22 |  | 39d |  | start no earlier than 2008-12-22 |  |  |
| 76 | 5.2.4.4 | 保存远程指定文件 | 1d | 2008-12-22 | 2008-12-22 |  | 39d |  | start no earlier than 2008-12-22 |  |  |
| 77 | 5.2.4.5 | 保存远程非SVG文件 | 1d | 2008-12-23 | 2008-12-23 |  | 38d |  | start no earlier than 2008-12-23 |  |  |
| 78 | 5.2.4.6 | 下载远程非SVG文件 | 1d | 2008-12-23 | 2008-12-23 |  | 38d |  | start no earlier than 2008-12-23 |  |  |
| 79 | 5.2.4.7 | 画布缩放接口 | 1d | 2008-12-24 | 2008-12-24 |  | 37d |  | start no earlier than 2008-12-24 |  |  |
| 80 | 5.2.4.8 | 画布平移接口 | 1d | 2008-12-24 | 2008-12-24 |  | 37d |  | start no earlier than 2008-12-24 |  |  |
| 81 | 5.2.4.9 | 画布坐标变换接口 | 1d | 2008-12-24 | 2008-12-24 |  | 37d |  | start no earlier than 2008-12-24 |  |  |
| 82 | 5.2.4.10 | 画布背景色修改接口 | 1d | 2008-12-24 | 2008-12-24 |  | 37d |  | start no earlier than 2008-12-24 |  |  |
| 83 | 5.2.4.11 | SVG文档获取接口 | 1d | 2008-12-24 | 2008-12-24 |  | 37d |  | start no earlier than 2008-12-24 |  |  |
| 84 | 5.2.4.12 | 拓扑关系获取接口 | 1d | 2008-12-25 | 2008-12-25 |  | 36d |  | start no earlier than 2008-12-25 |  |  |
| 85 | 5.2.4.13 | 拓扑成图接口 | 1d | 2008-12-25 | 2008-12-25 |  | 36d |  | start no earlier than 2008-12-25 |  |  |
| 86 | 5.2.4.14 | 拓扑分析统计接口 | 1d | 2008-12-25 | 2008-12-25 |  | 36d |  | start no earlier than 2008-12-25 |  |  |
| 87 | 5.2.4.15 | 拓扑分析自动成图接口 | 1d | 2008-12-25 | 2008-12-25 |  | 36d |  | start no earlier than 2008-12-25 |  |  |
| 88 | 5.2.4.16 | 图元状态变更接口 | 1d | 2008-12-26 | 2008-12-26 |  | 35d |  | start no earlier than 2008-12-26 |  |  |
| 89 | 5.2.4.17 | 图元颜色变更接口 | 1d | 2008-12-26 | 2008-12-26 |  | 35d |  | start no earlier than 2008-12-26 |  |  |
| 90 | 5.2.4.18 | 图元形状变更接口 | 1d | 2008-12-29 | 2008-12-29 |  | 34d |  | start no earlier than 2008-12-29 |  |  |
| 91 | 5.2.4.19 | 图元关联的文字变更接口 | 1d | 2008-12-29 | 2008-12-29 |  | 34d |  | start no earlier than 2008-12-29 |  |  |
| 92 | 5.2.5 | **调用外部接口** | 9d | 2008-12-30 | 2009-01-08 |  | 32d |  |  | 周惠明 | 72h |
| 93 | 5.2.5.1 | 业务系统模型列表获取接口 | 1d | 2008-12-30 | 2008-12-30 |  | 33d |  | start no earlier than 2008-12-30 |  |  |
| 94 | 5.2.5.2 | 外部系统模型属性列表获取接口 | 1d | 2008-12-30 | 2008-12-30 |  | 33d |  | start no earlier than 2008-12-30 |  |  |
| 95 | 5.2.5.3 | 外部系统模型动作列表获取接口 | 1d | 2008-12-31 | 2008-12-31 |  | 32d |  | start no earlier than 2008-12-31 |  |  |
| 96 | 5.2.5.4 | 外部系统模型状态列表获取接口 | 1d | 2008-12-31 | 2008-12-31 |  | 32d |  | start no earlier than 2008-12-31 |  |  |
| 97 | 5.2.5.5 | 外部系统模型信息获取接口 | 1d | 2009-01-01 | 2009-01-01 |  | 31d |  | start no earlier than 2009-01-01 |  |  |
| 98 | 5.2.5.6 | 外部系统业务对象数据请求接口 | 1d | 2009-01-02 | 2009-01-02 |  | 30d |  | start no earlier than 2009-01-02 |  |  |
| 99 | 5.2.5.7 | 外部系统业务对象创建接口 | 1d | 2009-01-05 | 2009-01-05 |  | 28d |  | start no earlier than 2009-01-05 |  |  |
| 100 | 5.2.5.8 | 外部系统业务对象关系查询接口 | 1d | 2009-01-06 | 2009-01-06 |  | 27d |  | start no earlier than 2009-01-06 |  |  |
| 101 | 5.2.5.9 | 外部系统业务对象关系维护接口 | 1d | 2009-01-07 | 2009-01-07 |  | 26d |  | start no earlier than 2009-01-07 |  |  |
| 102 | 5.2.5.10 | 外部系统模型动作发起接口 | 1d | 2009-01-08 | 2009-01-08 |  | 25d |  | start no earlier than 2009-01-08 |  |  |
| 103 | 5.2.6 | 区域刷新 | 2d? | 2008-11-24 | 2008-11-25 |  | 23d | 0d | start no earlier than 2008-11-24 | 俞翔 | 16h |
| 104 | 5.2.7 | 提高图形显示速度 | 1d | 2008-11-26 | 2008-11-26 | 103 | 23d | 0d |  | 俞翔 | 8h |
| 105 | 5.2.8 | 平移操作 | 1d? | 2008-11-27 | 2008-11-27 | 104 | 23d | 0d |  | 俞翔 | 8h |
| 106 | 5.2.9 | 拓扑点 | 1d? | 2008-11-28 | 2008-11-28 | 105 | 23d | 0d |  | 俞翔 | 8h |
| 107 | 5.2.10 | 连接点 | 1d? | 2008-12-01 | 2008-12-01 | 106 | 23d | 0d |  | 俞翔 | 8h |
| 108 | 5.2.11 | 图形与文字关联 | 1d? | 2008-12-02 | 2008-12-02 | 107 | 23d | 0d |  | 俞翔 | 8h |
| 109 | 5.2.12 | 内嵌web | 2d | 2008-11-26 | 2008-11-27 | 39 | 49d | 0d | finish no earlier than 2008-11-27 | 汪棋良 | 16h |
| 110 | 5.2.13 | 图元绘制 | 1d? | 2008-11-28 | 2008-11-28 | 109 | 49d | 0d |  | 汪棋良 | 8h |
| 111 | 5.2.14 | 图元保存 | 1d? | 2008-12-01 | 2008-12-01 | 110 | 49d | 0d |  | 汪棋良 | 8h |
| 112 | 5.2.15 | 图元获取 | 1d? | 2008-12-02 | 2008-12-02 | 111 | 49d | 0d | finish no earlier than 2008-12-01 | 汪棋良 | 8h |
| 113 | 5.2.16 | 图元维护 | 1d? | 2008-12-03 | 2008-12-03 | 112 | 49d | 0d |  | 汪棋良 | 8h |
| 114 | 5.2.17 | 图元状态制定 | 1d? | 2008-12-04 | 2008-12-04 | 113 | 49d | 0d | start no earlier than 2008-12-02 | 汪棋良 | 8h |
| 115 | 5.2.18 | 模板绘制 | 1d? | 2008-12-05 | 2008-12-05 | 114 | 49d | 0d | start no earlier than 2008-12-03 | 汪棋良 | 8h |
| 116 | 5.2.19 | 模板保存 | 1d? | 2008-12-08 | 2008-12-08 | 115 | 49d |  |  | 汪棋良 | 8h |
| 117 | 5.2.20 | 模板获取 | 1d? | 2008-12-15 | 2008-12-16 | 166 | 42.5d | 0d | start no earlier than 2008-12-04 | 汪棋良 | 8h |
| 118 | 5.2.21 | 模板维护 | 1d? | 2008-12-16 | 2008-12-17 | 117 | 42.5d |  |  | 汪棋良 | 8h |
| 119 | 5.2.22 | 版本管理 | 5d? | 2008-12-03 | 2008-12-09 | 108 | 23d | 0d | finish no earlier than 2008-12-05 | 俞翔 | 40h |
| 120 | 5.2.23 | 业务模型列表获取 | 1d? | 2008-12-10 | 2008-12-10 | 119 | 23d | 0d | start no earlier than 2008-12-08 | 俞翔 | 8h |
| 121 | 5.2.24 | 图元选择框 | 1d? | 2008-12-11 | 2008-12-11 | 120 | 23d | 0d |  | 俞翔 | 8h |
| 122 | 5.2.25 | 图元与业务模型关系维护 | 1d? | 2008-12-12 | 2008-12-12 | 121 | 23d | 0d |  | 俞翔 | 8h |
| 123 | 5.2.26 | 图元查询 | 1d? | 2008-12-15 | 2008-12-15 | 122 | 23d | 0d |  | 俞翔 | 8h |
| 124 | 5.2.27 | 模板与业务模型关系维护 | 1d? | 2008-12-16 | 2008-12-16 | 123 | 23d | 0d |  | 俞翔 | 8h |
| 125 | 5.2.28 | 模板查询 | 1d? | 2008-12-17 | 2008-12-17 | 124 | 23d | 0d |  | 俞翔 | 8h |
| 126 | 5.2.29 | 模板内图元关系维护 | 1d? | 2008-12-18 | 2008-12-18 | 125 | 23d | 0d |  | 俞翔 | 8h |
| 127 | 5.2.30 | 模板模型与图元模型关系维护 | 1d? | 2008-12-19 | 2008-12-19 | 126 | 23d | 0d |  | 俞翔 | 8h |
| 128 | 5.2.31 | 图上图元绘制 | 1d? | 2008-12-16 | 2008-12-17 | 167 | 25.5d | 0d | start no earlier than 2008-12-08 | 汪棋良 | 8h |
| 129 | 5.2.32 | 图元模型业务动作配置 | 1d? | 2008-12-17 | 2008-12-18 | 128 | 25.5d | 0d |  | 汪棋良 | 8h |
| 130 | 5.2.33 | 图上模板绘制 | 1d? | 2008-12-18 | 2008-12-19 | 129 | 25.5d | 0d |  | 汪棋良 | 8h |
| 131 | 5.2.34 | 图上模板修改 | 1d? | 2008-12-19 | 2008-12-22 | 130 | 25.5d | 0d |  | 汪棋良 | 8h |
| 132 | 5.2.35 | 业务模型图类型定制 | 1d | 2008-12-22 | 2008-12-23 | 131 | 25.5d | 0d |  | 汪棋良 | 8h |
| 133 | 5.2.36 | 绘图自动成图 | 3d? | 2008-12-23 | 2008-12-26 | 132 | 25.5d | 0d | finish no earlier than 2008-12-17 | 汪棋良 | 24h |
| 134 | 5.2.37 | 创建及维护业务对象实例 | 1d? | 2008-12-26 | 2008-12-29 | 133 | 25.5d | 0d | start no earlier than 2008-12-18 | 汪棋良 | 8h |
| 135 | 5.2.38 | 创建及维护模板对象实例 | 1d? | 2008-12-29 | 2008-12-30 | 134 | 25.5d | 0d |  | 汪棋良 | 8h |
| 136 | 5.2.39 | 业务对象实例算法复用 | 1d? | 2008-12-22 | 2008-12-22 | 127 | 23d | 0d | start no earlier than 2008-12-18 | 俞翔 | 8h |
| 137 | 5.2.40 | 实例化过程子模型选择 | 1d? | 2008-12-23 | 2008-12-23 | 136 | 37d | 0d | start no earlier than 2008-12-18 | 俞翔 | 8h |
| 138 | 5.2.41 | 业务对象间关系建立 | 1d? | 2008-12-24 | 2008-12-24 | 137 | 37d |  |  | 俞翔 | 8h |
| 139 | 5.2.42 | 业务系统模型对象更改响应 | 1d? | 2008-12-23 | 2008-12-23 | 136 | 23d | 0d |  | 俞翔 | 8h |
| 140 | 5.2.43 | 拓扑提取 | 2d | 2008-12-24 | 2008-12-25 | 139 | 23d | 0d |  | 俞翔 | 16h |
| 141 | 5.2.44 | 拓扑成图 | 2d | 2008-12-26 | 2008-12-29 | 140 | 23d | 0d |  | 俞翔 | 16h |

| ID | WBS | Task | Duration | Start | Finish | Predecessors | Total slack | Free slack | Constraint | Resources | Work |
| --- | --- | --- | --- | --- | --- | --- | --- | --- | --- | --- | --- |
| 142 | 5.2.45 | 图元着色 | 1d? | 2008-12-30 | 2008-12-30 | 141 | 23d | 0d |  | 俞翔 | 8h |
| 143 | 5.2.46 | 图元状态变更 | 1d? | 2008-12-31 | 2008-12-31 | 142 | 23d | 0d | start no earlier than 2008-12-26 | 俞翔 | 8h |
| 144 | 5.2.47 | 图元形状变化 | 1d? | 2009-01-01 | 2009-01-01 | 143 | 23d | 0d | start no earlier than 2008-12-26 | 俞翔 | 8h |
| 145 | 5.2.48 | 文字变化 | 1d? | 2009-01-02 | 2009-01-02 | 144 | 23d | 0d |  | 俞翔 | 8h |
| 146 | 5.2.49 | 统计 | 1d? | 2009-01-04 | 2009-01-04 | 145 | 23d | 0d | start no earlier than 2008-12-29 | 俞翔 | 8h |
| 147 | 5.2.50 | 自动成图 | 2d | 2009-01-05 | 2009-01-06 | 146 | 23d | 0d |  | 俞翔 | 16h |
| 148 | 5.2.51 | 图与图之间关系 | 1d? | 2009-01-07 | 2009-01-07 | 147 | 23d | 0d | start no earlier than 2009-01-04 | 俞翔 | 8h |
| 149 | 5.2.52 | 图间无缝切换 | 1d? | 2009-01-08 | 2009-01-08 | 148 | 23d | 0d |  | 俞翔 | 8h |
| 150 | 5.2.53 | 业务分析结果对图操作 | 1d? | 2009-01-09 | 2009-01-09 | 149 | 23d | 0d |  | 俞翔 | 8h |
| 151 | 5.2.54 | 实例对象的动作操作 | 1d? | 2009-01-12 | 2009-01-12 | 150 | 23d |  |  | 俞翔 | 8h |
| 152 | 5.2.55 | 纯浏览模式applet | 2d | 2008-12-30 | 2009-01-01 | 135 | 25.5d | 0d | start no earlier than 2008-12-22 | 汪棋良 | 16h |
| 153 | 5.2.56 | SVG图形与业务系统的交互 | 2d | 2009-01-01 | 2009-01-04 | 152 | 25.5d | 0d |  | 汪棋良 | 16h |
| 154 | 5.2.57 | 提升Applet启动速度 | 1d? | 2009-01-04 | 2009-01-05 | 153 | 25.5d | 0d |  | 汪棋良 | 8h |
| 155 | 5.2.58 | 结果动画化显示 | 1d? | 2009-01-05 | 2009-01-06 | 154 | 25.5d | 0d | finish no earlier than 2008-12-31 | 汪棋良 | 8h |
| 156 | 5.2.59 | 表格绘制 | 2d? | 2009-01-06 | 2009-01-08 | 155 | 25.5d |  | finish no earlier than 2009-01-05 | 汪棋良 | 16h |
| 157 | 5.2.60 | 代码表维护 | 0.5d? | 2008-12-08 | 2008-12-08 |  | 25.5d | 0d | start no earlier than 2008-12-08 | 吴冰; WEB开发待定人员1 | 8h |
| 158 | 5.2.61 | 图库管理 | 0.5d? | 2008-12-08 | 2008-12-08 | 157 | 25.5d | 0d | finish no earlier than 2008-11-19 | 吴冰; WEB开发待定人员1 | 8h |
| 159 | 5.2.62 | 系统管理 | 0.5d? | 2008-12-09 | 2008-12-09 | 158 | 25.5d | 0d |  | 吴冰; WEB开发待定人员1 | 8h |
| 160 | 5.2.63 | 升级管理 | 0.5d? | 2008-12-09 | 2008-12-09 | 159 | 25.5d | 0d |  | 吴冰; WEB开发待定人员1 | 8h |
| 161 | 5.2.64 | 日志管理 | 0.5d? | 2008-12-10 | 2008-12-10 | 160 | 25.5d | 0d |  | 吴冰; WEB开发待定人员1 | 8h |
| 162 | 5.2.65 | 业务模型图属性维护 | 1d | 2008-12-10 | 2008-12-11 | 161 | 25.5d | 0d | finish no earlier than 2008-11-25 | 吴冰; WEB开发待定人员1 | 16h |
| 163 | 5.2.66 | 其它格式图档管理 | 0.5d? | 2008-12-11 | 2008-12-11 | 162 | 25.5d | 0d |  | 吴冰; WEB开发待定人员1 | 8h |
| 164 | 5.2.67 | 图元基本信息修改及图元删除 | 0.5d? | 2008-12-12 | 2008-12-12 | 163 | 25.5d | 0d |  | 吴冰; WEB开发待定人员1 | 8h |
| 165 | 5.2.68 | 图元(模板)与模型的关系维护 | 0.5d? | 2008-12-12 | 2008-12-12 | 164 | 25.5d | 0d |  | 吴冰; WEB开发待定人员1 | 8h |
| 166 | 5.2.69 | 后台图形格式转换 | 0.5d? | 2008-12-15 | 2008-12-15 | 165 | 25.5d | 0d | finish no earlier than 2008-12-03 | 吴冰; WEB开发待定人员1 | 8h |
| 167 | 5.2.70 | 业务模型图审核 | 1d? | 2008-12-15 | 2008-12-16 | 166 | 25.5d | 0d | finish no earlier than 2008-12-05 | 吴冰; WEB开发待定人员1 | 16h |
| 168 | 5.3 | 开发人员测试（初步调试） | 2d | 2009-01-08 | 2009-01-09 |  | 24d |  | start no earlier than 2009-01-08 |  | 120h |
| 169 | 5.4 | 代码审查（抽查） | 41d | 2008-11-17 | 2009-01-09 |  | 24d |  | start no earlier than 2008-11-17 |  | 16h |

| ID | WBS | Task | Duration | Start | Finish | Predecessors | Total slack | Free slack | Constraint | Resources | Work |
| --- | --- | --- | --- | --- | --- | --- | --- | --- | --- | --- | --- |
| 170 | 6 | **测试验证** | 61d? | 2008-11-21 | 2009-02-12 |  | 7d |  |  | 测试人员 | 616h |
| 171 | 6.1 | **功能测试** | 61d? | 2008-11-21 | 2009-02-12 |  | 7d |  |  |  | 128h |
| 172 | 6.1.1 | 编写测试用例 | 5d | 2008-11-21 | 2008-11-27 |  | 55d | 0d | start no earlier than 2008-11-21 |  | 40h |
| 173 | 6.1.2 | 编写测试计划 | 1d? | 2008-11-28 | 2008-11-28 | 172 | 55d |  | finish no earlier than 2008-10-28 |  |  |
| 174 | 6.1.3 | 制定集成测试计划 | 2d | 2008-11-21 | 2008-11-24 |  | 59d |  | start no earlier than 2008-11-21 |  | 32h |
| 175 | 6.1.4 | 编写集成测试用例 | 2d? | 2008-11-21 | 2008-11-24 |  | 59d |  | finish no earlier than 2008-11-24 |  |  |
| 176 | 6.1.5 | 集成测试 | 3d? | 2009-01-12 | 2009-01-14 |  | 7d | 0d | finish no earlier than 2009-01-14 |  |  |
| 177 | 6.1.6 | 搭建测试环境 | 1d? | 2009-01-15 | 2009-01-15 | 176 | 7d | 0d |  |  |  |
| 178 | 6.1.7 | 测试与代码修改 | 19d | 2009-01-16 | 2009-02-11 | 177 | 7d | 0d | finish no earlier than 2009-02-06 |  | 40h |
| 179 | 6.1.8 | 形成测试报告 | 1d | 2009-02-12 | 2009-02-12 | 178 | 7d |  | finish no earlier than 2009-02-10 |  | 16h |
| 180 | 7 | **产品发布** | 23d | 2009-01-12 | 2009-02-11 |  | 8d |  |  | 部署小组 | 264h |
| 181 | 7.1 | **系统发布** | 3d | 2009-02-09 | 2009-02-11 |  | 8d |  |  |  | 24h |
| 182 | 7.1.1 | 源码封版 | 1d | 2009-02-09 | 2009-02-09 |  | 2d | 0d | start no earlier than 2009-02-09 | 周慧明 | 8h |
| 183 | 7.1.2 | 源码验证 | 1d | 2009-02-10 | 2009-02-10 | 182 | 2d |  | finish no earlier than 2009-02-10 | 周慧明 | 8h |
| 184 | 7.1.3 | 版本发布 | 2d | 2009-02-10 | 2009-02-11 |  | 1d |  | finish no earlier than 2009-02-11 | 周慧明 [50%] | 8h |
| 185 | 7.2 | **文档发布** | 9d | 2009-01-12 | 2009-01-22 |  | 22d |  |  |  | 56h |
| 186 | 7.2.1 | 编写用户手册 | 5d | 2009-01-12 | 2009-01-16 |  | 15d | 0d | start no earlier than 2009-01-12 | 周慧明 [60%] | 24h |
| 187 | 7.2.2 | 编写系统维护手册 | 2d | 2009-01-19 | 2009-01-20 | 186 | 15d | 0d |  | 周慧明 | 16h |
| 188 | 7.2.3 | 评审文档 | 2d | 2009-01-21 | 2009-01-22 | 187 | 15d |  |  | 周慧明 | 16h |
| 189 | 8 | **质量保证** | 138d? | 2008-07-28 | 2009-01-30 |  | 16d |  |  | PPQA工程师; 项目经理 | 2208h |
| 190 | 8.1 | **计划** | 4d? | 2008-10-20 | 2008-10-23 |  | 88d |  |  |  |  |
| 191 | 8.1.1 | 制定审计检查单 | 2d? | 2008-10-20 | 2008-10-21 |  | 83d |  | finish no earlier than 2008-10-21 |  |  |
| 192 | 8.1.2 | 制定质量保证计划 | 2d? | 2008-10-20 | 2008-10-21 |  | 83d |  | finish no earlier than 2008-10-21 |  |  |
| 193 | 8.1.3 | 质量保证计划和检查单评审 | 1d? | 2008-10-23 | 2008-10-23 |  | 81d |  | start no earlier than 2008-10-23 |  |  |

| ID | WBS | Task | Duration | Start | Finish | Predecessors | Total slack | Free slack | Constraint |
| --- | --- | --- | --- | --- | --- | --- | --- | --- | --- |
| 194 | 8.2 | **过程审计** | 138d? | 2008-07-28 | 2009-01-30 |  | 16d |  |  |
| 195 | 8.2.1 | **日常审计** | 79d | 2008-09-23 | 2009-01-06 |  | 34d |  |  |
| 196 | 8.2.1.1 | 日常审计 1 | 1d | 2008-09-23 | 2008-09-23 |  | 105d |  | start no earlier than 2008-09-23 |
| 197 | 8.2.1.2 | 日常审计 2 | 1d | 2008-09-30 | 2008-09-30 |  | 98d |  | start no earlier than 2008-09-30 |
| 198 | 8.2.1.3 | 日常审计 3 | 1d | 2008-10-07 | 2008-10-07 |  | 93d |  | start no earlier than 2008-10-07 |
| 199 | 8.2.1.4 | 日常审计 4 | 1d | 2008-10-14 | 2008-10-14 |  | 88d |  | start no earlier than 2008-10-14 |
| 200 | 8.2.1.5 | 日常审计 5 | 1d | 2008-10-21 | 2008-10-21 |  | 83d |  | start no earlier than 2008-10-21 |
| 201 | 8.2.1.6 | 日常审计 6 | 1d | 2008-10-28 | 2008-10-28 |  | 78d |  | start no earlier than 2008-10-28 |
| 202 | 8.2.1.7 | 日常审计 7 | 1d | 2008-11-04 | 2008-11-04 |  | 73d |  | start no earlier than 2008-11-04 |
| 203 | 8.2.1.8 | 日常审计 8 | 1d | 2008-11-11 | 2008-11-11 |  | 68d |  | start no earlier than 2008-11-11 |
| 204 | 8.2.1.9 | 日常审计 9 | 1d | 2008-11-18 | 2008-11-18 |  | 63d |  | start no earlier than 2008-11-18 |
| 205 | 8.2.1.10 | 日常审计 10 | 1d | 2008-11-25 | 2008-11-25 |  | 58d |  | start no earlier than 2008-11-25 |
| 206 | 8.2.1.11 | 日常审计 11 | 1d | 2008-12-02 | 2008-12-02 |  | 53d |  | start no earlier than 2008-12-02 |
| 207 | 8.2.1.12 | 日常审计 12 | 1d | 2008-12-09 | 2008-12-09 |  | 48d |  | start no earlier than 2008-12-09 |
| 208 | 8.2.1.13 | 日常审计 13 | 1d | 2008-12-16 | 2008-12-16 |  | 43d |  | start no earlier than 2008-12-16 |
| 209 | 8.2.1.14 | 日常审计 14 | 1d | 2008-12-23 | 2008-12-23 |  | 38d |  | start no earlier than 2008-12-23 |
| 210 | 8.2.1.15 | 日常审计 15 | 1d | 2008-12-30 | 2008-12-30 |  | 33d |  | start no earlier than 2008-12-30 |
| 211 | 8.2.1.16 | 日常审计 16 | 1d | 2009-01-06 | 2009-01-06 |  | 27d |  | start no earlier than 2009-01-06 |
| 212 | 8.2.2 | 触发性事件审计 | 4d | 2009-01-06 | 2009-01-09 |  | 22d | 0d | finish no earlier than 2009-01-09 |
| 213 | 8.2.3 | 需求阶段审计 | 1d | 2008-10-22 | 2008-10-22 |  | 82d |  | start no earlier than 2008-10-22 |
| 214 | 8.2.4 | 设计阶段审计 | 1d? | 2008-11-14 | 2008-11-14 |  | 65d |  | start no earlier than 2008-11-14 |
| 215 | 8.2.5 | 实现阶段审计 | 2d | 2009-01-12 | 2009-01-13 | 212 | 22d |  | finish no earlier than 2009-01-13 |
| 216 | 8.2.6 | 测试阶段审计 | 2d? | 2009-01-22 | 2009-01-23 |  | 14d |  | finish no earlier than 2009-01-23 |
| 217 | 8.2.7 | 产品发布阶段审计 | 3d? | 2009-01-28 | 2009-01-30 |  | 9d |  | finish no earlier than 2009-01-30 |

| ID | WBS | Task | Duration | Start | Finish | Total slack | Constraint |
| --- | --- | --- | --- | --- | --- | --- | --- |
| 218 | 8.2.8 | **过程问题跟踪** | 130d | 2008-07-28 | 2009-01-20 | 24d |  |
| 219 | 8.2.8.1 | 过程问题跟踪 1 | 1d | 2008-09-23 | 2008-09-23 | 105d | start no earlier than 2008-09-23 |
| 220 | 8.2.8.2 | 过程问题跟踪 2 | 1d | 2008-09-30 | 2008-09-30 | 98d | start no earlier than 2008-09-30 |
| 221 | 8.2.8.3 | 过程问题跟踪 3 | 1d | 2008-10-07 | 2008-10-07 | 93d | start no earlier than 2008-10-07 |
| 222 | 8.2.8.4 | 过程问题跟踪 4 | 1d | 2008-10-14 | 2008-10-14 | 88d | start no earlier than 2008-10-14 |
| 223 | 8.2.8.5 | 过程问题跟踪 5 | 1d | 2008-10-21 | 2008-10-21 | 83d | start no earlier than 2008-10-21 |
| 224 | 8.2.8.6 | 过程问题跟踪 6 | 1d | 2008-10-28 | 2008-10-28 | 78d | start no earlier than 2008-10-28 |
| 225 | 8.2.8.7 | 过程问题跟踪 7 | 1d | 2008-11-04 | 2008-11-04 | 73d | start no earlier than 2008-11-04 |
| 226 | 8.2.8.8 | 过程问题跟踪 8 | 1d | 2008-11-11 | 2008-11-11 | 68d | start no earlier than 2008-11-11 |
| 227 | 8.2.8.9 | 过程问题跟踪 9 | 1d | 2008-11-18 | 2008-11-18 | 63d | start no earlier than 2008-11-18 |
| 228 | 8.2.8.10 | 过程问题跟踪 10 | 1d | 2008-11-25 | 2008-11-25 | 58d | start no earlier than 2008-11-25 |
| 229 | 8.2.8.11 | 过程问题跟踪 11 | 1d | 2008-12-02 | 2008-12-02 | 53d | start no earlier than 2008-12-02 |
| 230 | 8.2.8.12 | 过程问题跟踪 12 | 1d | 2008-12-09 | 2008-12-09 | 48d | start no earlier than 2008-12-09 |
| 231 | 8.2.8.13 | 过程问题跟踪 13 | 1d | 2008-12-16 | 2008-12-16 | 43d | start no earlier than 2008-12-16 |
| 232 | 8.2.8.14 | 过程问题跟踪 14 | 1d | 2008-12-23 | 2008-12-23 | 38d | start no earlier than 2008-12-23 |
| 233 | 8.2.8.15 | 过程问题跟踪 15 | 1d | 2008-12-30 | 2008-12-30 | 33d | start no earlier than 2008-12-30 |
| 234 | 8.2.8.16 | 过程问题跟踪 16 | 1d | 2009-01-06 | 2009-01-06 | 27d | start no earlier than 2009-01-06 |
| 235 | 8.2.8.17 | 过程问题跟踪 18 | 1d | 2009-01-20 | 2009-01-20 | 17d | start no earlier than 2009-01-20 |
| 236 | 8.2.8.18 | 过程问题跟踪 19 | 1d | 2008-07-28 | 2008-07-28 | 146d |  |
| 237 | 8.2.8.19 | 过程问题跟踪 17 | 1d | 2009-01-13 | 2009-01-13 | 22d | start no earlier than 2009-01-13 |
| 238 | 8.3 | **度量分析** | 90d | 2008-09-27 | 2009-01-27 | 19d |  |
| 239 | 8.3.1 | 度量分析 1 | 1d | 2008-09-27 | 2008-09-27 | 101d | start no earlier than 2008-09-27 |
| 240 | 8.3.2 | 度量分析 2 | 1d | 2008-10-27 | 2008-10-27 | 79d | start no earlier than 2008-10-27 |
| 241 | 8.3.3 | 度量分析 3 | 1d | 2008-11-27 | 2008-11-27 | 56d | start no earlier than 2008-11-27 |
| 242 | 8.3.4 | 度量分析 4 | 1d | 2008-12-29 | 2008-12-29 | 34d | start no earlier than 2008-12-27 |
| 243 | 8.3.5 | 度量分析 5 | 1d | 2009-01-27 | 2009-01-27 | 12d | start no earlier than 2009-01-27 |

| ID | WBS | Task | Duration | Start | Finish | Predecessors | Total slack | Free slack | Constraint | Resources | Work |
| --- | --- | --- | --- | --- | --- | --- | --- | --- | --- | --- | --- |
| 244 | 9 | **配置管理** | 94d? | 2008-09-23 | 2009-01-27 |  | 19d |  |  | PPQA工程师; 项目经理 | 1504h |
| 245 | 9.1 | **计划** | 3d? | 2008-10-21 | 2008-10-23 |  | 88d |  |  |  |  |
| 246 | 9.1.1 | 编制配置项计划 | 2d? | 2008-10-21 | 2008-10-22 |  | 82d |  | finish no earlier than 2008-10-22 |  |  |
| 247 | 9.1.2 | 编制配置管理计划 | 2d? | 2008-10-21 | 2008-10-22 |  | 81d | 0d | finish no earlier than 2008-10-22 |  |  |
| 248 | 9.1.3 | 配置计划评审 | 1d? | 2008-10-23 | 2008-10-23 | 247 | 81d |  |  |  |  |
| 249 | 9.2 | **日常配置管理** | 94d | 2008-09-23 | 2009-01-27 |  | 19d |  |  |  |  |
| 250 | 9.2.1 | 日常配置管理 1 | 1d | 2008-09-23 | 2008-09-23 |  | 105d |  | start no earlier than 2008-09-23 |  |  |
| 251 | 9.2.2 | 日常配置管理 2 | 1d | 2008-09-30 | 2008-09-30 |  | 98d |  | start no earlier than 2008-09-30 |  |  |
| 252 | 9.2.3 | 日常配置管理 3 | 1d | 2008-10-07 | 2008-10-07 |  | 93d |  | start no earlier than 2008-10-07 |  |  |
| 253 | 9.2.4 | 日常配置管理 4 | 1d | 2008-10-14 | 2008-10-14 |  | 88d |  | start no earlier than 2008-10-14 |  |  |
| 254 | 9.2.5 | 日常配置管理 5 | 1d | 2008-10-21 | 2008-10-21 |  | 83d |  | start no earlier than 2008-10-21 |  |  |
| 255 | 9.2.6 | 日常配置管理 6 | 1d | 2008-10-28 | 2008-10-28 |  | 78d |  | start no earlier than 2008-10-28 |  |  |
| 256 | 9.2.7 | 日常配置管理 7 | 1d | 2008-11-04 | 2008-11-04 |  | 73d |  | start no earlier than 2008-11-04 |  |  |
| 257 | 9.2.8 | 日常配置管理 8 | 1d | 2008-11-11 | 2008-11-11 |  | 68d |  | start no earlier than 2008-11-11 |  |  |
| 258 | 9.2.9 | 日常配置管理 9 | 1d | 2008-11-18 | 2008-11-18 |  | 63d |  | start no earlier than 2008-11-18 |  |  |
| 259 | 9.2.10 | 日常配置管理 10 | 1d | 2008-11-25 | 2008-11-25 |  | 58d |  | start no earlier than 2008-11-25 |  |  |
| 260 | 9.2.11 | 日常配置管理 11 | 1d | 2008-12-02 | 2008-12-02 |  | 53d |  | start no earlier than 2008-12-02 |  |  |
| 261 | 9.2.12 | 日常配置管理 12 | 1d | 2008-12-09 | 2008-12-09 |  | 48d |  | start no earlier than 2008-12-09 |  |  |
| 262 | 9.2.13 | 日常配置管理 13 | 1d | 2008-12-16 | 2008-12-16 |  | 43d |  | start no earlier than 2008-12-16 |  |  |
| 263 | 9.2.14 | 日常配置管理 14 | 1d | 2008-12-23 | 2008-12-23 |  | 38d |  | start no earlier than 2008-12-23 |  |  |
| 264 | 9.2.15 | 日常配置管理 15 | 1d | 2008-12-30 | 2008-12-30 |  | 33d |  | start no earlier than 2008-12-30 |  |  |
| 265 | 9.2.16 | 日常配置管理 16 | 1d | 2009-01-06 | 2009-01-06 |  | 27d |  | start no earlier than 2009-01-06 |  |  |
| 266 | 9.2.17 | 日常配置管理 17 | 1d | 2009-01-13 | 2009-01-13 |  | 22d |  | start no earlier than 2009-01-13 |  |  |
| 267 | 9.2.18 | 日常配置管理 18 | 1d | 2009-01-20 | 2009-01-20 |  | 17d |  | start no earlier than 2009-01-20 |  |  |
| 268 | 9.2.19 | 日常配置管理 19 | 1d | 2009-01-27 | 2009-01-27 |  | 12d |  | start no earlier than 2009-01-27 |  |  |

| ID | WBS | Task | Duration | Start | Finish | Total slack | Constraint | Resources | Work |
| --- | --- | --- | --- | --- | --- | --- | --- | --- | --- |
| 269 | 9.3 | **配置审计** | 90d | 2008-09-27 | 2009-01-27 | 19d |  |  |  |
| 270 | 9.3.1 | 配置审计 1 | 1d | 2008-09-27 | 2008-09-27 | 101d | start no earlier than 2008-09-27 |  |  |
| 271 | 9.3.2 | 配置审计 2 | 1d | 2008-10-27 | 2008-10-27 | 79d | start no earlier than 2008-10-27 |  |  |
| 272 | 9.3.3 | 配置审计 3 | 1d | 2008-11-27 | 2008-11-27 | 56d | start no earlier than 2008-11-27 |  |  |
| 273 | 9.3.4 | 配置审计 4 | 1d | 2008-12-29 | 2008-12-29 | 34d | start no earlier than 2008-12-27 |  |  |
| 274 | 9.3.5 | 配置审计 5 | 1d | 2009-01-27 | 2009-01-27 | 12d | start no earlier than 2009-01-27 |  |  |
| 275 | 10 | **项目监控（任务跟踪、风险监控）** | 114d? | 2008-09-22 | 2009-02-23 | 0d |  | PPQA工程师; 项目经理 | 1824h |
| 276 | 10.1 | **里程碑总结** | 71d? | 2008-10-21 | 2009-01-26 | 20d |  |  |  |
| 277 | 10.1.1 | 需求阶段总结 | 1d? | 2008-10-21 | 2008-10-21 | 83d | start no earlier than 2008-10-21 |  |  |
| 278 | 10.1.2 | 设计阶段总结 | 1d? | 2008-11-13 | 2008-11-13 | 66d | start no earlier than 2008-11-13 |  |  |
| 279 | 10.1.3 | 验收阶段总结 | 1d? | 2009-01-26 | 2009-01-26 | 13d | start no earlier than 2009-01-24 |  |  |
| 280 | 10.2 | **月报** | 44d? | 2008-10-31 | 2008-12-31 | 39d |  |  |  |
| 281 | 10.2.1 | 2008年10月报 | 1d? | 2008-10-31 | 2008-10-31 | 75d | start no earlier than 2008-10-31 |  |  |
| 282 | 10.2.2 | 2008年11月报 | 1d? | 2008-11-28 | 2008-11-28 | 55d | start no earlier than 2008-11-28 |  |  |
| 283 | 10.2.3 | 2008年12月报 | 1d? | 2008-12-31 | 2008-12-31 | 32d | start no earlier than 2008-12-31 |  |  |
| 284 | 10.3 | **阶段报告** | 114d? | 2008-09-22 | 2009-02-23 | 0d |  |  |  |
| 285 | 10.3.1 | 需求阶段报告 | 1d? | 2008-10-21 | 2008-10-21 | 83d | start no earlier than 2008-10-21 |  |  |
| 286 | 10.3.2 | 设计阶段报告 | 1d? | 2008-11-14 | 2008-11-14 | 65d | start no earlier than 2008-11-14 |  |  |
| 287 | 10.3.3 | 实现一阶段报告 | 1d? | 2008-12-15 | 2008-12-15 | 44d | start no earlier than 2008-12-15 |  |  |
| 288 | 10.3.4 | 实现二阶段报告 | 1d? | 2009-01-09 | 2009-01-09 | 24d | start no earlier than 2009-01-09 |  |  |
| 289 | 10.3.5 | 测试阶段报告 | 1d? | 2009-01-22 | 2009-01-22 | 15d | start no earlier than 2009-01-22 |  |  |
| 290 | 10.3.6 | **项目周例会 （任务跟踪、风险监控、计划调整、问题解决）** | 114d | 2008-09-22 | 2009-02-23 | 0d |  |  |  |
| 291 | 10.3.6.1 | 项目周例会 1 | 1d | 2008-09-22 | 2008-09-22 | 113d | start no earlier than 2008-09-22 |  |  |
| 292 | 10.3.6.2 | 项目周例会 2 | 1d | 2008-09-29 | 2008-09-29 | 106d | start no earlier than 2008-09-29 |  |  |
| 293 | 10.3.6.3 | 项目周例会 3 | 1d | 2008-10-06 | 2008-10-06 | 101d | start no earlier than 2008-10-06 |  |  |
| 294 | 10.3.6.4 | 项目周例会 4 | 1d | 2008-10-13 | 2008-10-13 | 96d | start no earlier than 2008-10-13 |  |  |
| 295 | 10.3.6.5 | 项目周例会 5 | 1d | 2008-10-20 | 2008-10-20 | 91d | start no earlier than 2008-10-20 |  |  |
| 296 | 10.3.6.6 | 项目周例会 6 | 1d | 2008-10-27 | 2008-10-27 | 86d | start no earlier than 2008-10-27 |  |  |
| 297 | 10.3.6.7 | 项目周例会 7 | 1d | 2008-11-03 | 2008-11-03 | 81d | start no earlier than 2008-11-03 |  |  |
| 298 | 10.3.6.8 | 项目周例会 8 | 1d | 2008-11-10 | 2008-11-10 | 76d | start no earlier than 2008-11-10 |  |  |
| 299 | 10.3.6.9 | 项目周例会 9 | 1d | 2008-11-17 | 2008-11-17 | 71d | start no earlier than 2008-11-17 |  |  |
| 300 | 10.3.6.10 | 项目周例会 10 | 1d | 2008-11-24 | 2008-11-24 | 66d | start no earlier than 2008-11-24 |  |  |
| 301 | 10.3.6.11 | 项目周例会 11 | 1d | 2008-12-01 | 2008-12-01 | 61d | start no earlier than 2008-12-01 |  |  |
| 302 | 10.3.6.12 | 项目周例会 12 | 1d | 2008-12-08 | 2008-12-08 | 56d | start no earlier than 2008-12-08 |  |  |
| 303 | 10.3.6.13 | 项目周例会 13 | 1d | 2008-12-15 | 2008-12-15 | 51d | start no earlier than 2008-12-15 |  |  |
| 304 | 10.3.6.14 | 项目周例会 14 | 1d | 2008-12-22 | 2008-12-22 | 46d | start no earlier than 2008-12-22 |  |  |
| 305 | 10.3.6.15 | 项目周例会 15 | 1d | 2008-12-29 | 2008-12-29 | 41d | start no earlier than 2008-12-29 |  |  |
| 306 | 10.3.6.16 | 项目周例会 16 | 1d | 2009-01-05 | 2009-01-05 | 35d | start no earlier than 2009-01-05 |  |  |
| 307 | 10.3.6.17 | 项目周例会 17 | 1d | 2009-01-12 | 2009-01-12 | 30d | start no earlier than 2009-01-12 |  |  |
| 308 | 10.3.6.18 | 项目周例会 18 | 1d | 2009-01-19 | 2009-01-19 | 25d | start no earlier than 2009-01-19 |  |  |
| 309 | 10.3.6.19 | 项目周例会 19 | 1d | 2009-01-26 | 2009-01-26 | 20d | start no earlier than 2009-01-26 |  |  |
| 310 | 10.3.6.20 | 项目周例会 20 | 1d | 2009-02-02 | 2009-02-02 | 15d | start no earlier than 2009-02-02 |  |  |
| 311 | 10.3.6.21 | 项目周例会 21 | 1d | 2009-02-09 | 2009-02-09 | 10d | start no earlier than 2009-02-09 |  |  |
| 312 | 10.3.6.22 | 项目周例会 22 | 1d | 2009-02-16 | 2009-02-16 | 5d | start no earlier than 2009-02-16 |  |  |
| 313 | 10.3.6.23 | 项目周例会 23 | 1d | 2009-02-23 | 2009-02-23 | 0d | start no earlier than 2009-02-23 |  |  |
