Schedule from MS Project, 2007-11-07 to 2007-11-16, A marks actual dates.

## Calendars

- 标准: Mon-Fri 08:00-12:00, 13:00-17:00; Sat-Sun off.

## Resources

| Resource |
| --- |
| 王慧 |
| 叶高杰 |
| 测试组 |
| 开发组 |
| 开发组&测试组 |

## Schedule

| ID | WBS | Task | Duration | Start | Finish | Predecessors | Complete | Remaining | Total slack | Constraint | Resources | Work | Actual work |
| --- | --- | --- | --- | --- | --- | --- | --- | --- | --- | --- | --- | --- | --- |
| 1 | 1 | **UMS3.0测试** | 8d | 2007-11-07 08:00 A | 2007-11-16 17:00 |  | 42% | 4.63d | 0d |  |  | 76h | 32h |
| 2 | 1.1 | 测试计划 | 2d | 2007-11-07 08:00 A | 2007-11-08 17:00 A |  | 100% |  |  |  | 王慧 | 16h | 16h |
| 3 | 1.2 | 部署环境&业务培训 | 1d | 2007-11-08 08:00 A | 2007-11-08 17:00 A |  | 100% |  |  | finish no earlier than 2007-11-08 17:00 | 开发组 | 8h | 8h |
| 4 | 1.3 | 设计,评审测试用例 | 1d | 2007-11-08 08:00 A | 2007-11-08 17:00 A |  | 100% |  |  | start no earlier than 2007-11-08 08:00 | 测试组 | 8h | 8h |
| 5 | 1.4 | 执行测试 | 0.5d | 2007-11-09 08:00 A | 2007-11-09 12:00 |  |  | 0.5d | 5.5d | finish no earlier than 2007-11-09 17:00 | 测试组 | 4h |  |
| 6 | 1.5 | 评审bug | 0.5d | 2007-11-09 08:00 | 2007-11-09 12:00 | 4 |  |  | 5.5d |  | 开发组&测试组 | 4h |  |
| 7 | 1.6 | 确定压力测试策略 | 0.5d | 2007-11-12 08:00 | 2007-11-12 12:00 |  |  |  | 4.5d | start no earlier than 2007-11-12 08:00 | 开发组&测试组 | 4h |  |
| 8 | 1.7 | 压力测试 | 3d | 2007-11-13 08:00 | 2007-11-15 17:00 | 7 |  |  | 0d | start no earlier than 2007-11-13 08:00 | 测试组 | 24h |  |
| 9 | 1.8 | 编制测试报告 | 1d | 2007-11-16 08:00 | 2007-11-16 17:00 | 8 |  |  | 0d |  | 测试组 | 8h |  |
