# ums plan1

Schedule from MS Project, 2007-09-19 to 2007-11-27, A marks actual dates.
nci

## Calendars

- 标准: Mon-Fri 08:00-12:00, 13:00-17:00; Sat-Sun off. Exceptions (off unless hours are given): 2007-09-29 to 2007-09-30 08:00-12:00, 13:00-17:00.

## Schedule

| ID | WBS | Task | Duration | Start | Finish | Predecessors | Complete | Remaining | Total slack | Free slack | Constraint |
| --- | --- | --- | --- | --- | --- | --- | --- | --- | --- | --- | --- |
| 1 | 1 | **分析设计** | 4d? | 2007-09-19 A | 2007-09-24 |  | 75% | 1d? | 52d |  |  |
| 2 | 1.1 | 需求文档 | 1d? | 2007-09-19 A | 2007-09-19 A |  | 100% |  |  |  |  |
| 3 | 1.2 | 接口（消息体）定义文档 | 1d? | 2007-09-19 A | 2007-09-19 A |  | 100% |  |  |  |  |
| 4 | 1.3 | 概要设计文档 | 1d? | 2007-09-19 A | 2007-09-19 A |  | 100% |  |  |  |  |
| 5 | 1.4 | 数据库结构调整 | 1d? | 2007-09-24 | 2007-09-24 |  |  |  | 48d |  | start no earlier than 2007-09-24 |
| 6 | 2 | **代码编写** | 40d? | 2007-09-19 | 2007-11-09 |  |  |  | 12d |  |  |
| 7 | 2.1 | **管理平台重构** | 10d? | 2007-10-29 | 2007-11-09 |  |  |  | 12d |  |  |
| 8 | 2.1.1 | 应用注册 | 1d | 2007-10-29 | 2007-10-29 |  |  |  | 12d | 0d | start no earlier than 2007-10-29 |
| 9 | 2.1.2 | 服务注册 | 1d | 2007-10-30 | 2007-10-30 | 8 |  |  | 12d | 0d |  |
| 10 | 2.1.3 | 应用渠道策略管理 | 2d | 2007-10-31 | 2007-11-01 | 9 |  |  | 12d | 0d |  |
| 11 | 2.1.4 | 服务信息管理 | 2d | 2007-11-02 | 2007-11-05 | 10 |  |  | 12d | 0d |  |
| 12 | 2.1.5 | 服务监控 | 1d? | 2007-11-06 | 2007-11-06 | 11 |  |  | 12d | 0d |  |
| 13 | 2.1.6 | 渠道监控 | 1d | 2007-11-07 | 2007-11-07 | 12 |  |  | 12d | 0d |  |
| 14 | 2.1.7 | 查询 | 2d | 2007-11-08 | 2007-11-09 | 13 |  |  | 12d |  |  |
| 15 | 2.2 | **UMS通信引擎升级** | 38d | 2007-09-19 | 2007-11-07 |  |  |  | 14d |  |  |
| 16 | 2.2.1 | **统一接入开发** | 24d | 2007-09-19 | 2007-10-18 |  |  |  | 14d | 0d |  |
| 17 | 2.2.1.1 | **消息体变更处理** | 16d | 2007-09-19 | 2007-10-08 |  |  |  | 14d | 0d |  |
| 18 | 2.2.1.1.1 | 消息体结构定义 | 3d | 2007-09-19 | 2007-09-21 |  |  |  | 14d | 0d |  |
| 19 | 2.2.1.1.2 | 统一发送接口定义和Webservice实现 | 7d | 2007-09-24 | 2007-09-30 | 18 |  |  | 14d | 0d |  |
| 20 | 2.2.1.1.3 | 优先级变化处理 | 3d | 2007-10-01 | 2007-10-03 | 19 |  |  | 14d | 0d |  |
| 21 | 2.2.1.1.4 | 失败消息处理 | 3d | 2007-10-04 | 2007-10-08 | 20 |  |  | 14d |  |  |
| 22 | 2.2.1.2 | 企业用户信息接口 | 1d | 2007-10-09 | 2007-10-09 | 17 |  |  | 14d | 0d |  |
| 23 | 2.2.1.3 | 消息过滤策略改造 | 2d | 2007-10-10 | 2007-10-11 | 22 |  |  | 14d | 0d |  |
| 24 | 2.2.1.4 | **消息发送策略** | 5d | 2007-10-12 | 2007-10-18 | 23 |  |  | 14d |  |  |
| 25 | 2.2.1.4.1 | 应用服务优先级接口和实现 | 4d | 2007-10-12 | 2007-10-17 |  |  |  | 14d | 0d |  |
| 26 | 2.2.1.4.2 | 个人优先级接口 | 1d | 2007-10-18 | 2007-10-18 | 25 |  |  | 14d |  |  |
| 27 | 2.2.2 | UMS系统运行监控 | 4d | 2007-10-19 | 2007-10-24 | 16 |  |  | 14d | 0d |  |
| 28 | 2.2.3 | 渠道增补和集成 | 10d | 2007-10-25 | 2007-11-07 | 27 |  |  | 14d |  |  |
| 29 | 3 | alpha集成测试和发布 | 5d | 2007-11-09 | 2007-11-15 |  |  |  | 0d |  | start no earlier than 2007-11-09 |
| 30 | 4 | beta中试 | 7d | 2007-11-16 | 2007-11-26 | 29 |  |  | 0d |  |  |
| 31 | 5 | 发布 | 1d? | 2007-11-27 | 2007-11-27 | 30 |  |  | 0d |  |  |

Notes:
- 17: �原有代码保留，按原先2.0设计的原理进行消息入口的全新开发
- 22: �定义 / �测试（默认） / �相关代码的改造
- 28: 因消息体变化，会产生原有渠道不兼容现象产生，需要重新定义相关渠道实现，原有渠道保留。
