# UMS4.0计划

Schedule from GanttProject, 2009-05-11 to 2009-12-07.
NCIRD－UMS Team
研究中心UMS4.0升级计划

## Calendars

- Project calendar: Mon-Fri working; Sat-Sun off.

## Resources

| Resource |
| --- |
| 汪棋良 |
| 周彗明 |
| 沈云刚 |
| 测试甲 |

## Schedule

| ID | WBS | Task | Duration | Start | Finish | Predecessors | Complete | Resources |
| --- | --- | --- | --- | --- | --- | --- | --- | --- |
| 1 | 1 | **知识准备** | 3d | 2009-05-11 | 2009-05-13 |  | 100% |  |
| 2 | 1.1 | UMS原理 | 2d | 2009-05-11 | 2009-05-12 |  | 100% | 周彗明; 汪棋良 [20%]; 沈云刚 [50%] |
| 3 | 1.2 | JMS原理和MySQL | 1d | 2009-05-13 | 2009-05-13 | 2 | 100% | 周彗明 |
| 4 | 2 | **需求** | 14d | 2009-05-14 | 2009-06-02 | 1 | 100% |  |
| 5 | 2.1 | 需求收集整理 | 2d | 2009-05-14 | 2009-05-15 | 1 | 100% | 周彗明 [50%]; 汪棋良 |
| 6 | 2.2 | **需求分析阶段** | 11d | 2009-05-18 | 2009-06-01 | 5 | 100% |  |
| 7 | 2.2.1 | 需求分析 | 3d | 2009-05-18 | 2009-05-20 | 5 | 100% | 周彗明; 汪棋良 |
| 8 | 2.2.2 | 需求规格说明书编写 | 8d | 2009-05-21 | 2009-06-01 | 7 | 100% | 周彗明 [80%]; 汪棋良 |
| 9 | 2.3 | **需求评审阶段** | 1d | 2009-06-02 | 2009-06-02 | 6 | 100% |  |
| 10 | 2.3.1 | 需求评审 | 1d | 2009-06-02 | 2009-06-02 | 8 | 100% | 周彗明; 汪棋良 |
| 11 | 3 | **概要设计** | 15d | 2009-07-27 | 2009-08-14 | 1 | 100% |  |
| 12 | 3.1 | **系统设计** | 10d | 2009-07-27 | 2009-08-07 |  | 100% |  |
| 13 | 3.1.1 | 总体设计 | 4d | 2009-07-27 | 2009-07-30 |  | 100% | 周彗明; 汪棋良 |
| 14 | 3.1.2 | 数据库设计 | 2d | 2009-07-31 | 2009-08-03 | 13 | 100% | 周彗明; 汪棋良 |
| 15 | 3.1.3 | 功能设计 | 3d | 2009-08-04 | 2009-08-06 | 14 | 100% | 周彗明 [50%]; 汪棋良 |
| 16 | 3.1.4 | 接口设计 | 1d | 2009-08-07 | 2009-08-07 | 15 | 100% | 周彗明 [50%]; 汪棋良 |
| 17 | 3.2 | **设计评审** | 5d | 2009-08-10 | 2009-08-14 | 12 | 100% |  |
| 18 | 3.2.1 | 概要设计说明书编写 | 3d | 2009-08-10 | 2009-08-12 | 16 | 100% | 周彗明 [50%]; 汪棋良 |
| 19 | 3.2.2 | 概要设计评审 | 1d | 2009-08-13 | 2009-08-13 | 9, 18 | 100% | 周彗明; 汪棋良 |
| 20 | 3.2.3 | 设计评审问题修正 | 1d | 2009-08-14 | 2009-08-14 | 19 | 100% | 周彗明 [50%]; 汪棋良 |
| 21 | 4 | **实现阶段** | 51d | 2009-08-17 | 2009-10-26 |  | 100% |  |
| 22 | 4.1 | **详细设计** | 51d | 2009-08-17 | 2009-10-26 | 11 | 100% |  |
| 23 | 4.1.1 | 系统总体架构搭建 | 2d | 2009-08-17 | 2009-08-18 | 20 | 100% | 汪棋良 |
| 24 | 4.1.2 | **代码编写＆单元测试** | 27d | 2009-08-19 | 2009-09-24 | 23 | 100% | 周彗明; 汪棋良 [30%]; 沈云刚 |
| 25 | 4.1.2.1 | 企业用户信息实现 | 5d | 2009-08-19 | 2009-08-25 | 23 | 100% |  |
| 26 | 4.1.2.2 | 数据转发平台 | 5d | 2009-08-26 | 2009-09-01 | 25 | 100% |  |
| 27 | 4.1.2.3 | UMS管理平台 | 5d | 2009-09-02 | 2009-09-08 | 26 | 100% |  |
| 28 | 4.1.2.4 | UMS策略定义 | 3d | 2009-09-09 | 2009-09-11 | 27 | 100% |  |
| 29 | 4.1.2.5 | UMS短信发送通用模块 | 5d | 2009-09-14 | 2009-09-18 | 28 | 100% |  |
| 30 | 4.1.2.6 | 其它通用模块 | 3d | 2009-09-21 | 2009-09-23 | 29 | 100% |  |
| 31 | 4.1.2.7 | UMS服务器其它功能 | 1d | 2009-09-24 | 2009-09-24 | 30 | 100% |  |

| ID | WBS | Task | Duration | Start | Finish | Predecessors | Complete | Resources |
| --- | --- | --- | --- | --- | --- | --- | --- | --- |
| 32 | 4.1.3 | **文档编写** | 4d | 2009-09-25 | 2009-09-30 | 24 | 100% |  |
| 33 | 4.1.3.1 | 用户使用手册 | 2d | 2009-09-25 | 2009-09-28 | 24 | 100% | 周彗明; 汪棋良; 沈云刚 |
| 34 | 4.1.3.2 | 部署手册 | 1d | 2009-09-29 | 2009-09-29 | 33 | 100% | 周彗明; 汪棋良; 沈云刚 |
| 35 | 4.1.3.3 | 二次开发手册 | 1d | 2009-09-30 | 2009-09-30 | 34 | 100% | 周彗明; 汪棋良; 沈云刚 |
| 36 | 4.1.4 | UMS集成 | 1d | 2009-10-09 | 2009-10-09 |  | 100% |  |
| 37 | 4.1.5 | 冒烟测试 | 1d | 2009-10-26 | 2009-10-26 |  | 100% |  |
| 38 | 5 | **验收** | 30d | 2009-10-27 | 2009-12-07 | 36 | 37% |  |
| 39 | 5.1 | **测试** | 29d | 2009-10-27 | 2009-12-04 | 22 | 39% |  |
| 40 | 5.1.1 | **功能测试** | 25d | 2009-10-27 | 2009-11-30 |  | 82% |  |
| 41 | 5.1.1.1 | 制定功能测试计划 | 1d | 2009-10-27 | 2009-10-27 | 37 | 100% | 测试甲 |
| 42 | 5.1.1.2 | 编写功能测试用例 | 2d | 2009-10-28 | 2009-10-29 | 41 | 100% | 测试甲 |
| 43 | 5.1.1.3 | 测试功能 | 17d | 2009-10-30 | 2009-11-23 | 42 | 100% | 测试甲 |
| 44 | 5.1.1.4 | Bug及不符合项修改 | 4d | 2009-11-24 | 2009-11-27 | 43 | 80% | 周彗明; 汪棋良; 沈云刚 |
| 45 | 5.1.1.5 | 生成功能测试报告 | 1d | 2009-11-30 | 2009-11-30 | 44 |  | 测试甲 |
| 46 | 5.1.2 | **性能测试** | 4d | 2009-12-01 | 2009-12-04 | 40 |  |  |
| 47 | 5.1.2.1 | 制定性能测试计划 | 1d | 2009-12-01 | 2009-12-01 | 40 |  | 测试甲 |
| 48 | 5.1.2.2 | 录制测试脚本和测试 | 1d | 2009-12-02 | 2009-12-02 | 47 |  | 测试甲 |
| 49 | 5.1.2.3 | 性能优化与修改 | 1d | 2009-12-03 | 2009-12-03 | 48 |  | 周彗明; 汪棋良; 沈云刚 |
| 50 | 5.1.2.4 | 生成性能测试报告 | 1d | 2009-12-04 | 2009-12-04 | 49 |  | 测试甲 |
| 51 | 5.2 | 产品验收 | 1d | 2009-12-07 | 2009-12-07 | 50 |  | 周彗明; 汪棋良 |
